Schedule from GanttProject, 2025-09-15 to 2026-02-06.

## Calendars

- Project calendar: Mon-Fri working; Sat-Sun off.

## Resources

| Resource | Group |
| --- | --- |
| Víctor Sánchez Valencia | Desarrollador |
| Clara Ruiz de las Heras | Desarrollador |
| Miguel Barrigón Gómez | Desarrollador |
| Mario Medrano Paredes | Desarrollador |

## Schedule

| ID | WBS | Task | Type | Duration | Start | Finish | Predecessors | Complete | Resources |
| --- | --- | --- | --- | --- | --- | --- | --- | --- | --- |
| 1 | 1 | **TP1:SE** |  | 105d | 2025-09-15 | 2026-02-06 |  | 39% |  |
| 2 | 1.1 | **Especificación del proyecto** |  | 8d | 2025-09-15 | 2025-09-24 |  | 100% |  |
| 3 | 1.1.1 | Definción de objetivos |  | 4d | 2025-09-15 | 2025-09-18 |  | 100% |  |
| 4 | 1.1.2 | Estudio del sistema |  | 4d | 2025-09-19 | 2025-09-24 | 3 | 100% |  |
| 5 | 1.2 | ENTREGA 1 SEMANA | milestone | 0d | 2025-09-19 | 2025-09-19 |  | 100% | Víctor Sánchez Valencia |
| 6 | 1.3 | ENTREGA 2 SEMANA | milestone | 0d | 2025-09-25 | 2025-09-25 |  | 100% | Clara Ruiz de las Heras |
| 7 | 1.4 | **PCB0: Diseño electronico y captura esquematica PCB0** |  | 14d | 2025-09-29 | 2025-10-16 |  | 72% | Clara Ruiz de las Heras |
| 8 | 1.4.1 | Busqueda de componentes |  | 1d | 2025-09-29 | 2025-09-29 | 4FS+2d | 100% | Clara Ruiz de las Heras |
| 9 | 1.4.2 | Creación de nuevos componentes |  | 2d | 2025-09-30 | 2025-10-01 | 8 | 100% |  |
| 10 | 1.4.3 | Posicionamiento componentes |  | 3d | 2025-09-30 | 2025-10-02 | 8 | 100% | Clara Ruiz de las Heras |
| 11 | 1.4.4 | Análisis consumo eléctrico |  | 4d | 2025-09-30 | 2025-10-03 | 8 | 100% | Clara Ruiz de las Heras |
| 12 | 1.4.5 | Análisis disipación de potencia |  | 4d | 2025-10-06 | 2025-10-09 | 11 |  | Clara Ruiz de las Heras |
| 13 | 1.4.6 | Rutado de conexiones |  | 4d | 2025-10-10 | 2025-10-15 | 12 | 100% | Clara Ruiz de las Heras |
| 14 | 1.4.7 | Generación de listado de materiales (BOM) |  | 13d | 2025-09-30 | 2025-10-16 | 8 | 100% | Clara Ruiz de las Heras |
| 15 | 1.4.8 | Documentación esquemático. Control de cambios |  | 14d | 2025-09-29 | 2025-10-16 | 8SS | 40% |  |
| 16 | 1.5 | **PCB1:Diseño electrónico y captura esquemática** |  | 14d | 2025-09-29 | 2025-10-16 |  | 63% | Mario Medrano Paredes |
| 17 | 1.5.1 | Busqueda de componentes |  | 1d | 2025-09-29 | 2025-09-29 | 4FS+2d | 100% | Mario Medrano Paredes |
| 18 | 1.5.2 | Creación de nuevos componentes |  | 2d | 2025-09-30 | 2025-10-01 | 17 | 100% |  |
| 19 | 1.5.3 | Posicionamiento componentes |  | 3d | 2025-09-30 | 2025-10-02 | 17 | 100% | Mario Medrano Paredes |
| 20 | 1.5.4 | Análisis consumo eléctrico |  | 4d | 2025-09-30 | 2025-10-03 | 17 | 100% |  |
| 21 | 1.5.5 | Análisis disipación de potencia |  | 4d | 2025-10-06 | 2025-10-09 | 20 |  |  |
| 22 | 1.5.6 | Rutado de conexiones |  | 4d | 2025-10-10 | 2025-10-15 | 21 | 100% | Mario Medrano Paredes |
| 23 | 1.5.7 | Generación de listado de materiales (BOM) |  | 13d | 2025-09-30 | 2025-10-16 | 17 | 100% | Mario Medrano Paredes |
| 24 | 1.5.8 | Documentación esquemático. Control de cambios |  | 14d | 2025-09-29 | 2025-10-16 | 17SS | 10% | Mario Medrano Paredes |

Notes:
- 4: hoja de especificaciones
- 8: listado de los componentes
- 9: de aquellos que no aparezcan en proteus o busqueda en otras librerias
- 10: colocación en proteus
- 14: con su presupuesto, por su unidad y el coste de diseño (horas dedicadas)
- 15: autoexplicativo, debemos poner algo de texto para describir que hacen. / Control de cambios, indicar semana a semana lo que se va haciendo
- 17: listado de los componentes
- 18: de aquellos que no aparezcan en proteus o busqueda en otras librerias
- 19: colocación en proteus
- 23: con su presupuesto, por su unidad y el coste de diseño (horas dedicadas)
- 24: autoexplicativo, debemos poner algo de texto para describir que hacen. / Control de cambios, indicar semana a semana lo que se va haciendo

| ID | WBS | Task | Type | Duration | Start | Finish | Predecessors | Complete | Resources |
| --- | --- | --- | --- | --- | --- | --- | --- | --- | --- |
| 25 | 1.6 | **PCB2 :Diseño electrónico y captura esquemática** |  | 14d | 2025-09-29 | 2025-10-16 |  | 63% | Miguel Barrigón Gómez |
| 26 | 1.6.1 | Busqueda de componentes |  | 1d | 2025-09-29 | 2025-09-29 | 4FS+2d | 100% | Miguel Barrigón Gómez |
| 27 | 1.6.2 | Creación de nuevos componentes |  | 2d | 2025-09-30 | 2025-10-01 | 26 | 100% | Miguel Barrigón Gómez |
| 28 | 1.6.3 | Posicionamiento componentes |  | 3d | 2025-09-30 | 2025-10-02 | 26 | 100% | Miguel Barrigón Gómez |
| 29 | 1.6.4 | Análisis consumo eléctrico |  | 4d | 2025-09-30 | 2025-10-03 | 26 | 100% | Miguel Barrigón Gómez |
| 30 | 1.6.5 | Análisis disipación de potencia |  | 4d | 2025-10-06 | 2025-10-09 | 29 |  | Miguel Barrigón Gómez |
| 31 | 1.6.6 | Rutado de conexiones |  | 4d | 2025-10-10 | 2025-10-15 | 30 | 100% | Miguel Barrigón Gómez |
| 32 | 1.6.7 | Generación de listado de materiales (BOM) |  | 13d | 2025-09-30 | 2025-10-16 | 26 | 100% | Miguel Barrigón Gómez |
| 33 | 1.6.8 | Documentación esquemático. Control de cambios |  | 14d | 2025-09-29 | 2025-10-16 | 26SS | 10% | Miguel Barrigón Gómez |
| 34 | 1.7 | **PCB3:Diseño electrónico y captura esquemática** |  | 14d | 2025-09-29 | 2025-10-16 |  | 63% | Víctor Sánchez Valencia |
| 35 | 1.7.1 | Busqueda de componentes |  | 1d | 2025-09-29 | 2025-09-29 | 4FS+2d | 100% | Víctor Sánchez Valencia |
| 36 | 1.7.2 | Creación de nuevos componentes |  | 2d | 2025-09-30 | 2025-10-01 | 35 | 100% | Víctor Sánchez Valencia |
| 37 | 1.7.3 | Posicionamiento componentes |  | 3d | 2025-09-30 | 2025-10-02 | 35 | 100% | Víctor Sánchez Valencia |
| 38 | 1.7.4 | Análisis consumo eléctrico |  | 4d | 2025-09-30 | 2025-10-03 | 35 | 100% | Víctor Sánchez Valencia |
| 39 | 1.7.5 | Análisis disipación de potencia |  | 4d | 2025-10-06 | 2025-10-09 | 38 |  | Víctor Sánchez Valencia |
| 40 | 1.7.6 | Rutado de conexiones |  | 4d | 2025-10-10 | 2025-10-15 | 39 | 100% | Víctor Sánchez Valencia |
| 41 | 1.7.7 | Generación de listado de materiales (BOM) |  | 13d | 2025-09-30 | 2025-10-16 | 35 | 100% | Víctor Sánchez Valencia |
| 42 | 1.7.8 | Documentación esquemático. Control de cambios |  | 14d | 2025-09-29 | 2025-10-16 | 35SS | 10% | Víctor Sánchez Valencia |
| 43 | 1.8 | ENTREGA 3 SEMANA | milestone | 0d | 2025-10-03 | 2025-10-03 |  | 100% | Miguel Barrigón Gómez |
| 44 | 1.9 | ENTREGA 4 SEMANA | milestone | 0d | 2025-10-10 | 2025-10-10 |  | 100% | Mario Medrano Paredes |
| 45 | 1.10 | ENTREGA 5 SEMANA | milestone | 0d | 2025-10-17 | 2025-10-17 |  | 100% | Víctor Sánchez Valencia |
| 46 | 1.11 | **PCB0: Diseño de la placa de circuito impreso** |  | 16d | 2025-10-17 | 2025-11-07 |  | 68% |  |
| 47 | 1.11.1 | Creación de huellas de nuevos componentes |  | 5d | 2025-10-17 | 2025-10-23 | 13FS+1d | 100% |  |
| 48 | 1.11.2 | Posicionado de componentes |  | 5d | 2025-10-17 | 2025-10-23 | 47SS | 100% |  |
| 49 | 1.11.3 | Definición de borde y zonas de conectores |  | 5d | 2025-10-17 | 2025-10-23 | 47SS | 100% |  |
| 50 | 1.11.4 | Documentación: acotaciones geométricas |  | 11d | 2025-10-24 | 2025-11-07 | 48, 49 | 100% |  |
| 51 | 1.11.5 | Planos de masa y otros |  | 3d | 2025-10-24 | 2025-10-28 | 49 | 100% |  |
| 52 | 1.11.6 | Rutado de conexiones |  | 5d | 2025-10-24 | 2025-10-30 | 49 | 100% |  |
| 53 | 1.11.7 | Planos de disipación térmica |  | 2d | 2025-10-24 | 2025-10-27 | 49 |  |  |
| 54 | 1.11.8 | Generación de ficheros para el fabricante (gerber) |  | 7d | 2025-10-29 | 2025-11-06 | 51, 53 | 80% |  |
| 55 | 1.11.9 | Documentación: serigrafía. Control de cambios |  | 15d | 2025-10-17 | 2025-11-06 | 47SS |  |  |

Notes:
- 26: listado de los componentes
- 27: de aquellos que no aparezcan en proteus o busqueda en otras librerias
- 28: colocación en proteus
- 32: con su presupuesto, por su unidad y el coste de diseño (horas dedicadas)
- 33: autoexplicativo, debemos poner algo de texto para describir que hacen. / Control de cambios, indicar semana a semana lo que se va haciendo
- 35: listado de los componentes
- 36: de aquellos que no aparezcan en proteus o busqueda en otras librerias
- 37: colocación en proteus
- 41: con su presupuesto, por su unidad y el coste de diseño (horas dedicadas)
- 42: autoexplicativo, debemos poner algo de texto para describir que hacen. / Control de cambios, indicar semana a semana lo que se va haciendo

| ID | WBS | Task | Type | Duration | Start | Finish | Predecessors | Complete | Resources |
| --- | --- | --- | --- | --- | --- | --- | --- | --- | --- |
| 56 | 1.12 | **PCB1:Diseño de la placa de circuito impreso** |  | 16d | 2025-10-17 | 2025-11-07 |  | 68% |  |
| 57 | 1.12.1 | Creación de huellas de nuevos componentes |  | 5d | 2025-10-17 | 2025-10-23 | 22FS+1d | 100% |  |
| 58 | 1.12.2 | Posicionado de componentes |  | 5d | 2025-10-17 | 2025-10-23 | 57SS | 100% |  |
| 59 | 1.12.3 | Definición de borde y zonas de conectores |  | 5d | 2025-10-17 | 2025-10-23 | 57SS | 100% |  |
| 60 | 1.12.4 | Documentación: acotaciones geométricas |  | 11d | 2025-10-24 | 2025-11-07 | 58, 59 | 100% |  |
| 61 | 1.12.5 | Planos de masa y otros |  | 3d | 2025-10-24 | 2025-10-28 | 59 | 100% |  |
| 62 | 1.12.6 | Rutado de conexiones |  | 5d | 2025-10-24 | 2025-10-30 | 59 | 100% |  |
| 63 | 1.12.7 | Planos de disipación térmica |  | 2d | 2025-10-24 | 2025-10-27 | 59 |  |  |
| 64 | 1.12.8 | Generación de ficheros para el fabricante (gerber) |  | 7d | 2025-10-29 | 2025-11-06 | 61, 63 | 80% |  |
| 65 | 1.12.9 | Documentación: serigrafía. Control de cambios |  | 15d | 2025-10-17 | 2025-11-06 | 57SS |  |  |
| 66 | 1.13 | **PCB2: Diseño de la placa de circuito impreso** |  | 16d | 2025-10-17 | 2025-11-07 |  | 68% |  |
| 67 | 1.13.1 | Creación de huellas de nuevos componentes |  | 5d | 2025-10-17 | 2025-10-23 | 31FS+1d | 100% |  |
| 68 | 1.13.2 | Posicionado de componentes |  | 5d | 2025-10-17 | 2025-10-23 | 67SS | 100% |  |
| 69 | 1.13.3 | Definición de borde y zonas de conectores |  | 5d | 2025-10-17 | 2025-10-23 | 67SS | 100% |  |
| 70 | 1.13.4 | Documentación: acotaciones geométricas |  | 11d | 2025-10-24 | 2025-11-07 | 68, 69 | 100% |  |
| 71 | 1.13.5 | Planos de masa y otros |  | 3d | 2025-10-24 | 2025-10-28 | 69 | 100% |  |
| 72 | 1.13.6 | Rutado de conexiones |  | 5d | 2025-10-24 | 2025-10-30 | 69 | 100% |  |
| 73 | 1.13.7 | Planos de disipación térmica |  | 2d | 2025-10-24 | 2025-10-27 | 69 |  |  |
| 74 | 1.13.8 | Generación de ficheros para el fabricante (gerber) |  | 7d | 2025-10-29 | 2025-11-06 | 71, 73 | 80% |  |
| 75 | 1.13.9 | Documentación: serigrafía. Control de cambios |  | 15d | 2025-10-17 | 2025-11-06 | 67SS |  |  |
| 76 | 1.14 | **PCB3: Diseño de la placa de circuito impreso** |  | 16d | 2025-10-17 | 2025-11-07 |  | 68% |  |
| 77 | 1.14.1 | Creación de huellas de nuevos componentes |  | 5d | 2025-10-17 | 2025-10-23 | 40FS+1d | 100% |  |
| 78 | 1.14.2 | Posicionado de componentes |  | 5d | 2025-10-17 | 2025-10-23 | 77SS | 100% |  |
| 79 | 1.14.3 | Definición de borde y zonas de conectores |  | 5d | 2025-10-17 | 2025-10-23 | 77SS | 100% |  |
| 80 | 1.14.4 | Documentación: acotaciones geométricas |  | 11d | 2025-10-24 | 2025-11-07 | 78, 79 | 100% |  |
| 81 | 1.14.5 | Planos de masa y otros |  | 3d | 2025-10-24 | 2025-10-28 | 79 | 100% |  |
| 82 | 1.14.6 | Rutado de conexiones |  | 5d | 2025-10-24 | 2025-10-30 | 79 | 100% |  |
| 83 | 1.14.7 | Planos de disipación térmica |  | 2d | 2025-10-24 | 2025-10-27 | 79 |  |  |
| 84 | 1.14.8 | Generación de ficheros para el fabricante (gerber) |  | 7d | 2025-10-29 | 2025-11-06 | 81, 83 | 80% |  |
| 85 | 1.14.9 | Documentación: serigrafía. Control de cambios |  | 15d | 2025-10-17 | 2025-11-06 | 77SS |  |  |
| 86 | 1.15 | ENTREGA 6 SEMANA | milestone | 0d | 2025-10-24 | 2025-10-24 |  | 100% | Clara Ruiz de las Heras |
| 87 | 1.16 | ENTREGA 7 SEMANA | milestone | 0d | 2025-10-31 | 2025-10-31 |  |  | Miguel Barrigón Gómez |
| 88 | 1.17 | ENTREGA 8 SEMANA | milestone | 0d | 2025-11-07 | 2025-11-07 |  |  | Mario Medrano Paredes |

| ID | WBS | Task | Type | Duration | Start | Finish | Predecessors | Resources |
| --- | --- | --- | --- | --- | --- | --- | --- | --- |
| 89 | 1.18 | **Fabricación de la placa de circuito impreso** |  | 11d | 2025-11-10 | 2025-11-24 |  |  |
| 90 | 1.18.1 | Envío al fabricante |  | 4d | 2025-11-10 | 2025-11-13 | 54FS+1d, 64FS+1d, 74FS+1d, 84FS+1d |  |
| 91 | 1.18.2 | Recepción y revisión |  | 1d | 2025-11-14 | 2025-11-14 | 90 |  |
| 92 | 1.18.3 | Montaje de componentes |  | 6d | 2025-11-17 | 2025-11-24 | 91 |  |
| 93 | 1.19 | ENTREGA 9 SEMANA | milestone | 0d | 2025-11-21 | 2025-11-21 |  | Víctor Sánchez Valencia |
| 94 | 1.20 | **Realización Hardware FPGA.** |  | 15d | 2025-11-21 | 2025-12-11 |  |  |
| 95 | 1.20.1 | Core: LarVA. |  | 5d | 2025-11-21 | 2025-11-27 | 54FS+10d, 64FS+10d, 74FS+10d, 84FS+10d |  |
| 96 | 1.20.2 | Periféricos: UART0/1/2, SPI0/1, Temporizador, GPOut, GPIn,.. |  | 7d | 2025-11-21 | 2025-12-01 | 95SS |  |
| 97 | 1.20.3 | Simulación |  | 8d | 2025-12-02 | 2025-12-11 | 95, 96 |  |
| 98 | 1.21 | ENTREGA 10 SEMANA | milestone | 0d | 2025-11-28 | 2025-11-28 |  | Clara Ruiz de las Heras |
| 99 | 1.22 | ENTREGA 11 SEMANA | milestone | 0d | 2025-12-05 | 2025-12-05 |  | Miguel Barrigón Gómez |
| 100 | 1.23 | **Realización Firmware. Simulación y depuración** |  | 14d | 2025-12-12 | 2025-12-31 |  |  |
| 101 | 1.23.1 | Control de elementos hardware: drivers |  | 14d | 2025-12-12 | 2025-12-31 | 97 |  |
| 102 | 1.23.2 | Verificación |  | 14d | 2025-12-12 | 2025-12-31 | 101SS |  |
| 103 | 1.23.3 | Programa principal. Especificaciones |  | 14d | 2025-12-12 | 2025-12-31 | 101SS |  |
| 104 | 1.23.4 | Documentación firmware. Control de cambios |  | 14d | 2025-12-12 | 2025-12-31 | 101SS |  |
| 105 | 1.24 | **Verificación hardware** |  | 40d | 2025-12-12 | 2026-02-05 |  |  |
| 106 | 1.24.1 | Verificación inicial |  | 20d | 2025-12-12 | 2026-01-08 | 97 |  |
| 107 | 1.24.2 | Verificación firmware |  | 20d | 2025-12-12 | 2026-01-08 | 106SS |  |
| 108 | 1.24.3 | Resolución de problemas |  | 20d | 2025-12-12 | 2026-01-08 | 106SS |  |
| 109 | 1.24.4 | Análisis de prestaciones |  | 20d | 2025-12-12 | 2026-01-08 | 106SS |  |
| 110 | 1.24.5 | Montaje final. Piezas mecánicas |  | 10d | 2026-01-09 | 2026-01-22 | 109 |  |
| 111 | 1.24.6 | Pruebas de campo |  | 10d | 2026-01-23 | 2026-02-05 | 110 |  |
| 112 | 1.25 | ENTREGA 12 SEMANA | milestone | 0d | 2025-12-12 | 2025-12-12 |  | Mario Medrano Paredes |
| 113 | 1.26 | ENTREGA 13 SEMANA | milestone | 0d | 2025-12-19 | 2025-12-19 |  | Víctor Sánchez Valencia |
| 114 | 1.27 | ENTREGA 14 SEMANA | milestone | 0d | 2026-01-09 | 2026-01-09 |  | Clara Ruiz de las Heras |
| 115 | 1.28 | ENTREGA 15 SEMANA | milestone | 0d | 2026-01-16 | 2026-01-16 |  | Miguel Barrigón Gómez |
| 116 | 1.29 | ENTREGA 16 SEMANA | milestone | 0d | 2026-01-21 | 2026-01-21 |  | Mario Medrano Paredes |

| ID | WBS | Task | Type | Duration | Start | Finish | Predecessors | Resources |
| --- | --- | --- | --- | --- | --- | --- | --- | --- |
| 117 | 1.30 | **Documentación** |  | 105d | 2025-09-15 | 2026-02-06 |  |  |
| 118 | 1.30.1 | Realización informe |  | 105d | 2025-09-15 | 2026-02-06 | 2SS |  |
| 119 | 1.31 | ENTREGA FINAL | milestone | 0d | 2026-02-06 | 2026-02-06 |  | Víctor Sánchez Valencia; Clara Ruiz de las Heras; Miguel Barrigón Gómez; Mario Medrano Paredes |
